# 结构及ID设计

How a schedule from a web Gantt chart changed from version to version. A marks actual dates.

## Version 1 (saved 2025-08-27)

| ID | Task | Duration | Start | Finish |
| --- | --- | --- | --- | --- |
| 2 | 外观设计初稿 | 5d | 2025-08-27 | 2025-09-02 |

## Version 2 (saved 2025-08-27)

Last finish 2025-09-02 → 2025-12-19 (+108d).

Added:

| ID | Task | Duration | Start | Finish | Predecessors |
| --- | --- | --- | --- | --- | --- |
| 3 | 外观初稿评审 | 1d | 2025-09-03 | 2025-09-03 | 2 |
| 4 | 外观设计定稿 | 5d | 2025-09-04 | 2025-09-10 | 3 |
| 5 | 结构设计初稿 | 5d | 2025-09-11 | 2025-09-17 | 4 |
| 6 | 结构初稿评审 | 1d | 2025-09-18 | 2025-09-18 | 5 |
| 7 | 结构设计定稿 | 5d | 2025-09-19 | 2025-09-25 | 6 |
| 8 | 手板制作 | 7d | 2025-09-26 | 2025-10-06 | 7 |
| 9 | 手板评审 | 1d | 2025-10-07 | 2025-10-07 | 8 |
| 10 | 外壳小批量 | 20d | 2025-10-08 | 2025-11-04 | 9 |
| 11 | 电路原理图设计 | 5d | 2025-09-26 | 2025-10-02 | 7 |
| 12 | PCB layout | 7d | 2025-10-03 | 2025-10-13 | 11 |
| 13 | 物料备料 | 14d | 2025-10-14 | 2025-10-31 | 12 |
| 14 | 贴片 | 10d | 2025-10-14 | 2025-10-27 | 12 |
| 15 | 驱动与固件设计 | 10d | 2025-10-14 | 2025-10-27 | 12 |
| 16 | 测试调试 | 14d | 2025-10-28 | 2025-11-14 | 15 |
| 17 | 包材设计 | 4d | 2025-09-26 | 2025-10-01 | 7 |
| 18 | 包材打样 | 5d | 2025-10-02 | 2025-10-08 | 17 |
| 19 | 小批量试产 | 25d | 2025-11-17 | 2025-12-19 | 16 |

## Version 3 (saved 2025-08-28)

Last finish 2025-12-19 → 2025-12-12 (-7d).

Changed:

| ID | Task | Start | Finish | Duration | Predecessors |
| --- | --- | --- | --- | --- | --- |
| 7 | 结构设计定稿 |  | 2025-09-25 → 2025-09-24 (-1d) | 5d → 4d |  |
| 8 | 手板制作 | 2025-09-26 → 2025-09-25 (-1d) | 2025-10-06 → 2025-10-10 (+4d) | 7d → 12d |  |
| 9 | 手板评审 | 2025-10-07 → 2025-10-13 (+6d) | 2025-10-07 → 2025-10-13 (+6d) |  |  |
| 10 | 外壳小批量 | 2025-10-08 → 2025-10-14 (+6d) | 2025-11-04 → 2025-11-03 (-1d) | 20d → 15d |  |
| 11 | 电路原理图设计 | 2025-09-26 → 2025-09-25 (-1d) | 2025-10-02 → 2025-10-09 (+7d) | 5d → 11d |  |
| 12 | PCB layout | 2025-10-03 → 2025-10-10 (+7d) | 2025-10-13 → 2025-10-20 (+7d) |  |  |
| 13 | 贴片 | 2025-10-14 → 2025-10-21 (+7d) | 2025-10-27 → 2025-11-03 (+7d) |  |  |
| 14 | 驱动与固件设计 | 2025-10-14 → 2025-10-21 (+7d) | 2025-10-27 → 2025-11-03 (+7d) |  |  |
| 15 | 测试调试 | 2025-10-28 → 2025-10-21 (-7d) | 2025-11-14 → 2025-11-07 (-7d) |  | 14 → 12 |
| 16 | 物料备料 | 2025-10-14 → 2025-10-21 (+7d) | 2025-10-31 → 2025-11-07 (+7d) |  |  |
| 17 | 包材设计 | 2025-09-26 → 2025-09-25 (-1d) | 2025-10-01 → 2025-10-09 (+8d) | 4d → 11d |  |
| 18 | 包材打样 | 2025-10-02 → 2025-10-10 (+8d) | 2025-10-08 → 2025-10-16 (+8d) |  |  |
| 19 | 小批量试产 | 2025-11-17 → 2025-11-10 (-7d) | 2025-12-19 → 2025-12-12 (-7d) |  |  |
